| task_id | task_name | baseline_duration | baseline_start | baseline_finish | scheduled_duration | scheduled_start | scheduled_finish | actual_start | actual_finish | percent_complete | task_status | task_type | project_id | early_start | early_finish | late_start | late_finish | total_slack | is_critical | dependencies | task_mode |
| --- | --- | --- | --- | --- | --- | --- | --- | --- | --- | --- | --- | --- | --- | --- | --- | --- | --- | --- | --- | --- | --- |
| 1 | Start | 0 | 2026-02-20 | 2026-02-20 | 0 | 2026-02-20 | 2026-02-20 | 2026-02-20 | 2026-02-20 | 100 | completed | milestone | 69cb67ff3c9ee524f64da53e | 2026-02-20 | 2026-02-20 | 2026-02-20 | 2026-02-20 | 0 | True |  |  |
| 2 | Mobilization at Site | 1 | 2026-02-20 | 2026-02-20 | 1 | 2026-02-20 | 2026-02-21 | 2026-02-20 | 2026-02-20 | 100 | completed | task | 69cb67ff3c9ee524f64da53e | 2026-02-20 | 2026-02-21 | 2026-02-20 | 2026-02-21 | 0 | True | 1 | Manual |
| 3 | Surveying & Layout | 1 | 2026-02-21 | 2026-02-21 | 1 | 2026-02-21 | 2026-02-22 | 2026-02-21 | 2026-02-21 | 100 | completed | task | 69cb67ff3c9ee524f64da53e | 2026-02-21 | 2026-02-22 | 2026-02-21 | 2026-02-22 | 0 | True | 2 | Auto |
| 4 | Approval for MEP - UGT, ST, SP | 12 | 2026-02-23 | 2026-03-09 | 12 | 2026-02-22 | 2026-03-06 | 2026-02-23 | 2026-03-09 | 100 | completed | task | 69cb67ff3c9ee524f64da53e | 2026-02-22 | 2026-03-06 | 2026-10-25 | 2026-11-06 | 245 |  | 3 |  |
| 5 | Approval for Swimming Pool | 12 | 2026-02-23 | 2026-03-09 | 12 | 2026-02-22 | 2026-03-06 | 2026-02-23 | 2026-03-09 | 100 | completed | task | 69cb67ff3c9ee524f64da53e | 2026-02-22 | 2026-03-06 | 2026-10-25 | 2026-11-06 | 245 |  | 3 |  |
| 6 | Excavation in Foundation Pits | 14 | 2026-02-21 | 2026-03-10 | 14 | 2026-02-22 | 2026-03-08 | 2026-02-21 | 2026-03-10 | 100 | completed | task | 69cb67ff3c9ee524f64da53e | 2026-02-22 | 2026-03-08 | 2026-02-22 | 2026-03-08 | 0 | True | 3 |  |
| 7 | Railing | 2 | 2026-03-10 | 2026-03-11 | 2 | 2026-03-08 | 2026-03-10 | 2026-03-10 | 2026-03-11 | 100 | completed | task | 69cb67ff3c9ee524f64da53e | 2026-03-08 | 2026-03-10 | 2026-03-08 | 2026-03-10 | 0 | True | 6 |  |
| 8 | Rubble Soling | 2 | 2026-03-11 | 2026-03-12 | 2 | 2026-03-10 | 2026-03-12 | 2026-03-11 | 2026-03-12 | 100 | completed | task | 69cb67ff3c9ee524f64da53e | 2026-03-10 | 2026-03-12 | 2026-03-10 | 2026-03-12 | 0 | True | 7 |  |
| 9 | PCC in Foundation | 2 | 2026-03-13 | 2026-03-14 | 2 | 2026-03-12 | 2026-03-14 | 2026-03-13 | 2026-03-14 | 100 | completed | task | 69cb67ff3c9ee524f64da53e | 2026-03-12 | 2026-03-14 | 2026-03-12 | 2026-03-14 | 0 | True | 8 |  |
| 10 | Marking for Foundation | 2 | 2026-03-16 | 2026-03-17 | 1 | 2026-03-14 | 2026-03-15 | 2026-03-13 | 2026-03-13 | 100 | completed | task | 69cb67ff3c9ee524f64da53e | 2026-03-14 | 2026-03-15 | 2026-03-14 | 2026-03-15 | 0 | True | 9 |  |
| 11 | Marking by Carpenter & Box Fitting | 1 | 2026-03-17 | 2026-03-17 | 1 | 2026-03-15 | 2026-03-16 | 2026-03-14 | 2026-03-14 | 100 | completed | task | 69cb67ff3c9ee524f64da53e | 2026-03-15 | 2026-03-16 | 2026-03-15 | 2026-03-16 | 0 | True | 10 |  |
| 12 | Steel Tying Column Erection | 2 | 2026-03-18 | 2026-03-19 | 7 | 2026-03-16 | 2026-03-23 | 2026-03-17 | 2026-03-24 | 100 | completed | task | 69cb67ff3c9ee524f64da53e | 2026-03-16 | 2026-03-23 | 2026-03-16 | 2026-03-23 | 0 | True | 11 |  |
| 13 | Steel Checking - Inspection Hold Point | 1 | 2026-03-20 | 2026-03-20 | 1 | 2026-03-23 | 2026-03-24 | 2026-03-25 | 2026-03-25 | 100 | completed | task | 69cb67ff3c9ee524f64da53e | 2026-03-23 | 2026-03-24 | 2026-03-23 | 2026-03-24 | 0 | True | 12 |  |
| 14 | Casting of Foundation | 1 | 2026-03-21 | 2026-03-21 | 1 | 2026-03-24 | 2026-03-25 | 2026-03-27 | 2026-03-27 | 100 | completed | task | 69cb67ff3c9ee524f64da53e | 2026-03-24 | 2026-03-25 | 2026-03-24 | 2026-03-25 | 0 | True | 13 |  |
| 15 | Starter for Column | 1 | 2026-03-23 | 2026-03-23 | 1 | 2026-03-25 | 2026-03-26 |  |  | 0 | draft | task | 69cb67ff3c9ee524f64da53e | 2026-03-25 | 2026-03-26 | 2026-03-25 | 2026-03-26 | 0 | True | 14 |  |
| 16 | Casting for Column | 1 | 2026-03-23 | 2026-03-23 | 1 | 2026-03-26 | 2026-03-27 |  |  | 0 | draft | task | 69cb67ff3c9ee524f64da53e | 2026-03-26 | 2026-03-27 | 2026-03-26 | 2026-03-27 | 0 | True | 15 |  |
| 17 | Column Shuttering & Casting - 1st Set | 3 | 2026-03-24 | 2026-03-26 | 3 | 2026-03-27 | 2026-03-30 |  |  | 0 | draft | task | 69cb67ff3c9ee524f64da53e | 2026-03-27 | 2026-03-30 | 2026-03-27 | 2026-03-30 | 0 | True | 16 |  |
| 18 | Column Shuttering & Casting - 2nd Set | 4 | 2026-03-27 | 2026-03-31 | 4 | 2026-03-30 | 2026-04-03 |  |  | 0 | draft | task | 69cb67ff3c9ee524f64da53e | 2026-03-30 | 2026-04-03 | 2026-03-30 | 2026-04-03 | 0 | True | 17 | Auto |
| 19 | Excavation for Foundation Masonry | 3 | 2026-04-01 | 2026-04-03 | 3 | 2026-04-03 | 2026-04-06 |  |  | 0 | draft | task | 69cb67ff3c9ee524f64da53e | 2026-04-03 | 2026-04-06 | 2026-04-03 | 2026-04-06 | 0 | True | 18 |  |
| 20 | Rubble Soling PCC in Foundation | 2 | 2026-04-04 | 2026-04-06 | 2 | 2026-04-06 | 2026-04-08 |  |  | 0 | draft | task | 69cb67ff3c9ee524f64da53e | 2026-04-06 | 2026-04-08 | 2026-04-06 | 2026-04-08 | 0 | True | 19 |  |
| 21 | Foundation Masonry | 5 | 2026-04-07 | 2026-04-11 | 5 | 2026-04-08 | 2026-04-13 |  |  | 0 | draft | task | 69cb67ff3c9ee524f64da53e | 2026-04-08 | 2026-04-13 | 2026-04-08 | 2026-04-13 | 0 | True | 20 |  |
| 22 | Backfilling in Plinth excavation for Pool | 3 | 2026-04-13 | 2026-04-15 | 3 | 2026-04-13 | 2026-04-16 |  |  | 0 | draft | task | 69cb67ff3c9ee524f64da53e | 2026-04-13 | 2026-04-16 | 2026-04-13 | 2026-04-16 | 0 | True | 21 |  |
| 23 | Compaction for Plinth Pool Soling & PCC | 3 | 2026-04-16 | 2026-04-18 | 3 | 2026-04-16 | 2026-04-19 |  |  | 0 | draft | task | 69cb67ff3c9ee524f64da53e | 2026-04-16 | 2026-04-19 | 2026-04-16 | 2026-04-19 | 0 | True | 22 |  |
| 24 | Soling & PCC for Plinth Beam | 1 | 2026-04-20 | 2026-04-20 | 1 | 2026-04-19 | 2026-04-20 |  |  | 0 | draft | task | 69cb67ff3c9ee524f64da53e | 2026-04-19 | 2026-04-20 | 2026-04-19 | 2026-04-20 | 0 | True | 23 |  |
| 25 | Steel for Plinth Beam | 4 | 2026-04-21 | 2026-04-24 | 4 | 2026-04-20 | 2026-04-24 |  |  | 0 | draft | task | 69cb67ff3c9ee524f64da53e | 2026-04-20 | 2026-04-24 | 2026-04-20 | 2026-04-24 | 0 | True | 24 |  |
| 26 | Shuttering for Plinth Beam | 5 | 2026-04-25 | 2026-04-30 | 5 | 2026-04-24 | 2026-04-29 |  |  | 0 | draft | task | 69cb67ff3c9ee524f64da53e | 2026-04-24 | 2026-04-29 | 2026-04-24 | 2026-04-29 | 0 | True | 25 |  |
| 27 | Casting of Plinth Beam | 2 | 2026-05-01 | 2026-05-02 | 2 | 2026-04-29 | 2026-05-01 |  |  | 0 | draft | task | 69cb67ff3c9ee524f64da53e | 2026-04-29 | 2026-05-01 | 2026-04-29 | 2026-05-01 | 0 | True | 26 |  |
| 28 | Backfilling in Plinth | 4 | 2026-05-01 | 2026-05-05 | 4 | 2026-05-01 | 2026-05-05 |  |  | 0 | draft | task | 69cb67ff3c9ee524f64da53e | 2026-05-01 | 2026-05-05 | 2026-05-01 | 2026-05-05 | 0 | True | 27 |  |
| 29 | Rubble Soling | 4 | 2026-05-06 | 2026-05-09 | 4 | 2026-05-05 | 2026-05-09 |  |  | 0 | draft | task | 69cb67ff3c9ee524f64da53e | 2026-05-05 | 2026-05-09 | 2026-05-05 | 2026-05-09 | 0 | True | 28 |  |
| 30 | PCC in Plinth | 2 | 2026-05-11 | 2026-05-12 | 2 | 2026-05-09 | 2026-05-11 |  |  | 0 | draft | task | 69cb67ff3c9ee524f64da53e | 2026-05-09 | 2026-05-11 | 2026-05-09 | 2026-05-11 | 0 | True | 29 |  |
| 31 | Completion of Plinth (RA-01) | 0 | 2026-05-12 | 2026-05-12 | 0 | 2026-05-11 | 2026-05-11 |  |  | 0 | draft | milestone | 69cb67ff3c9ee524f64da53e | 2026-05-11 | 2026-05-11 | 2026-05-11 | 2026-05-11 | 0 | True | 30 |  |
| 32 | Column Steel & Starter | 4 | 2026-05-11 | 2026-05-14 | 4 | 2026-05-11 | 2026-05-15 |  |  | 0 | draft | task | 69cb67ff3c9ee524f64da53e | 2026-05-11 | 2026-05-15 | 2026-05-11 | 2026-05-15 | 0 | True | 31 |  |
| 33 | Column Shuttering & Casting - 1st Set | 3 | 2026-05-15 | 2026-05-18 | 3 | 2026-05-15 | 2026-05-18 |  |  | 0 | draft | task | 69cb67ff3c9ee524f64da53e | 2026-05-15 | 2026-05-18 | 2026-05-15 | 2026-05-18 | 0 | True | 32 |  |
| 34 | Column Shuttering & Casting - 2nd Set with Staircase | 3 | 2026-05-19 | 2026-05-21 | 3 | 2026-05-18 | 2026-05-21 |  |  | 0 | draft | task | 69cb67ff3c9ee524f64da53e | 2026-05-18 | 2026-05-21 | 2026-05-18 | 2026-05-21 | 0 | True | 33 |  |
| 35 | 1F Slab Shuttering | 10 | 2026-05-22 | 2026-06-02 | 10 | 2026-05-21 | 2026-05-31 |  |  | 0 | draft | task | 69cb67ff3c9ee524f64da53e | 2026-05-21 | 2026-05-31 | 2026-05-21 | 2026-05-31 | 0 | True | 34 |  |
| 36 | 1F Steel tieing | 9 | 2026-06-03 | 2026-06-12 | 9 | 2026-05-31 | 2026-06-09 |  |  | 0 | draft | task | 69cb67ff3c9ee524f64da53e | 2026-05-31 | 2026-06-09 | 2026-05-31 | 2026-06-09 | 0 | True | 35 |  |
| 37 | Side Shuttering & Electricals | 3 | 2026-06-13 | 2026-06-16 | 3 | 2026-06-09 | 2026-06-12 |  |  | 0 | draft | task | 69cb67ff3c9ee524f64da53e | 2026-06-09 | 2026-06-12 | 2026-06-09 | 2026-06-12 | 0 | True | 36 |  |
| 38 | Casting for 1F Slab | 2 | 2026-06-17 | 2026-06-18 | 2 | 2026-06-12 | 2026-06-14 |  |  | 0 | draft | task | 69cb67ff3c9ee524f64da53e | 2026-06-12 | 2026-06-14 | 2026-06-12 | 2026-06-14 | 0 | True | 37 |  |
| 39 | Completion of 1F Slab (RA-02) | 0 | 2026-06-18 | 2026-06-18 | 0 | 2026-06-14 | 2026-06-14 |  |  | 0 | draft | milestone | 69cb67ff3c9ee524f64da53e | 2026-06-14 | 2026-06-14 | 2026-06-14 | 2026-06-14 | 0 | True | 38 |  |
| 40 | Completion of 2F Slab (RA-03) | 31 | 2026-06-19 | 2026-07-24 | 31 | 2026-06-14 | 2026-07-15 |  |  | 0 | draft | task | 69cb67ff3c9ee524f64da53e | 2026-06-14 | 2026-07-15 | 2026-06-14 | 2026-07-15 | 0 | True | 39 |  |
| 41 | Completion of Masonry Works (RA-04) | 31 | 2026-07-25 | 2026-08-31 | 31 | 2026-07-15 | 2026-08-15 |  |  | 0 | draft | task | 69cb67ff3c9ee524f64da53e | 2026-07-15 | 2026-08-15 | 2026-07-15 | 2026-08-15 | 0 | True | 40 |  |
| 42 | Completion of Internal Plastering (RA-05) | 49 | 2026-09-01 | 2026-10-30 | 49 | 2026-08-15 | 2026-10-03 |  |  | 0 | draft | task | 69cb67ff3c9ee524f64da53e | 2026-08-15 | 2026-10-03 | 2026-08-15 | 2026-10-03 | 0 | True | 41 |  |
| 43 | Completion of External Plastering (RA-06) | 34 | 2026-10-31 | 2026-12-15 | 34 | 2026-10-03 | 2026-11-06 |  |  | 0 | draft | task | 69cb67ff3c9ee524f64da53e | 2026-10-03 | 2026-11-06 | 2026-10-03 | 2026-11-06 | 0 | True | 42 |  |
| 44 | External Development & Final Bill (RA-07) | 34 | 2026-10-31 | 2026-12-15 | 34 | 2026-10-03 | 2026-11-06 |  |  | 0 | draft | task | 69cb67ff3c9ee524f64da53e | 2026-10-03 | 2026-11-06 | 2026-10-03 | 2026-11-06 | 0 | True | 42 |  |
