# Guirim Villament

Schedule from MS Project, 2026-03-30 to 2027-04-02, costs in ₹.

## Calendars

- TAC-PMC: Mon-Sat 09:00-13:00, 14:00-18:00; Sun off. Exceptions (off unless hours are given): 2026-08-15 (Independence Day), 2026-09-14 to 2026-09-15 (Ganesh Chaturthi), 2026-09-17 (Vishwakarma Pooja), 2026-11-08 (Diwali), 2026-12-19 (Goa Liberation Day), 2026-12-25 (Christmas Day), 2027-01-01 (New Years).

## Resources

| Resource |
| --- |
| Contractor |
| PMC |
| Structural Engr |
| Client |
| Architect |
| MEP Consultant |

## Schedule

| ID | WBS | Task | Type | Duration | Start | Finish | Predecessors | Total slack | Free slack | Constraint | Resources | Cost |
| --- | --- | --- | --- | --- | --- | --- | --- | --- | --- | --- | --- | --- |
| 1 | 1 | **Guirim Villament (BUA 1,704 Mtr2)** |  | 310d | 2026-03-30 | 2027-04-02 |  | 0d |  |  |  | 25,277,436.75 |
| 2 | 1.1 | Issuance of Mobilisation Advance | milestone | 0d | 2026-03-30 | 2026-03-30 |  | 0d |  | start no earlier than 2026-03-30 | Client |  |
| 3 | 1.2 | Site Mobilisation |  | 10d | 2026-03-30 | 2026-04-09 | 2 | 0d |  |  |  |  |
| 4 | 1.3 | Excavation |  | 15d | 2026-04-10 | 2026-04-27 | 3 | 0d |  |  |  |  |
| 5 | 1.4 | Raft Foundation |  | 20d | 2026-04-28 | 2026-05-20 | 4 | 0d |  |  |  |  |
| 6 | 1.5 | **RCC Works** |  | 150d | 2026-05-21 | 2026-11-16 |  | 0d |  |  |  |  |
| 7 | 1.5.1 | GF Slab |  | 30d | 2026-05-21 | 2026-06-24 | 5 | 0d |  |  |  |  |
| 8 | 1.5.2 | First Floor Slab |  | 30d | 2026-06-25 | 2026-07-29 | 7 | 0d |  |  |  |  |
| 9 | 1.5.3 | Second Floor Slab |  | 30d | 2026-07-30 | 2026-09-03 | 8 | 115d | 0d |  |  |  |
| 10 | 1.5.4 | Third Floor Slab |  | 30d | 2026-09-04 | 2026-10-12 | 9 | 115d | 0d |  |  |  |
| 11 | 1.5.5 | Fourth Floor Slab |  | 30d | 2026-10-13 | 2026-11-16 | 10 | 115d |  |  |  |  |
| 12 | 1.6 | **Masonry Works** |  | 125d | 2026-07-30 | 2026-12-29 |  | 0d |  |  |  |  |
| 13 | 1.6.1 | Ground Floor |  | 25d | 2026-07-30 | 2026-08-28 | 8 | 0d |  |  |  |  |
| 14 | 1.6.2 | First Floor |  | 25d | 2026-08-29 | 2026-09-30 | 13 | 0d |  |  |  |  |
| 15 | 1.6.3 | Second Floor |  | 25d | 2026-10-01 | 2026-10-29 | 14 | 80d | 0d |  |  |  |
| 16 | 1.6.4 | Third Floor |  | 25d | 2026-10-30 | 2026-11-27 | 15 | 80d | 0d |  |  |  |
| 17 | 1.6.5 | Fourth Floor |  | 25d | 2026-11-28 | 2026-12-29 | 16 | 80d | 5d |  |  |  |
| 18 | 1.7 | **Plastering Works** |  | 125d | 2026-10-01 | 2027-02-26 |  | 0d |  |  |  |  |
| 19 | 1.7.1 | Ground Floor |  | 20d | 2026-10-01 | 2026-10-23 | 14 | 0d |  |  |  |  |
| 20 | 1.7.2 | First Floor |  | 20d | 2026-10-24 | 2026-11-16 | 19 | 0d |  |  |  |  |
| 21 | 1.7.3 | Second Floor |  | 20d | 2026-11-17 | 2026-12-09 | 20 | 0d |  |  |  |  |
| 22 | 1.7.4 | Third Floor |  | 20d | 2026-12-10 | 2027-01-05 | 21 | 0d |  |  |  |  |
| 23 | 1.7.5 | Fourth Floor |  | 20d | 2027-01-06 | 2027-01-28 | 22 | 55d |  |  |  |  |
| 24 | 1.7.6 | External Plaster |  | 45d | 2027-01-06 | 2027-02-26 | 22 | 0d |  |  |  |  |
| 25 | 1.8 | MEP Work |  | 30d | 2027-02-27 | 2027-04-02 | 24 | 0d |  |  |  |  |
| 26 | 1.9 | Site Development |  | 30d | 2027-02-27 | 2027-04-02 | 24 | 0d |  |  |  |  |
| 27 | 1.10 | Civil Works Hand Over | milestone | 0d | 2027-04-02 | 2027-04-02 | 26 | 0d |  |  |  |  |

| ID | WBS | Task | Type | Duration | Start | Finish | Predecessors | Total slack | Cost |
| --- | --- | --- | --- | --- | --- | --- | --- | --- | --- |
| 28 | 1.11 | **Payment Schedule** |  | 235d | 2026-05-20 | 2027-02-26 |  | 30d | 25,277,436.75 |
| 29 | 1.11.1 | Plinth Completion | milestone | 0d | 2026-05-20 | 2026-05-20 | 5 | 265d | 3,600,000 |
| 30 | 1.11.2 | Ground Floor Slab | milestone | 0d | 2026-06-24 | 2026-06-24 | 7 | 235d | 3,600,000 |
| 31 | 1.11.3 | First Floor Slab + Ground Floor Masonry | milestone | 0d | 2026-08-28 | 2026-08-28 | 8, 13 | 180d | 3,600,000 |
| 32 | 1.11.4 | Second Floor Slab + First Floor Masonry | milestone | 0d | 2026-11-16 | 2026-11-16 | 15, 20 | 115d | 3,600,000 |
| 33 | 1.11.5 | Third Floor Slab + Second Floor Masonry | milestone | 0d | 2026-12-09 | 2026-12-09 | 16, 21 | 95d | 3,600,000 |
| 34 | 1.11.6 | Forth Floor Slab + Third Floor Masonry | milestone | 0d | 2027-01-05 | 2027-01-05 | 17, 22 | 75d | 3,600,000 |
| 35 | 1.11.7 | Plastering Complete (Internal + External) | milestone | 0d | 2027-02-26 | 2027-02-26 | 24 | 30d | 3,677,436.75 |
